# M2 Plan

Schedule from MS Project, 2014-10-13 to 2014-10-24, 3 hours a day, costs in $.

## Calendars

- Standard: Mon-Fri 08:00-12:00, 13:00-17:00; Sat-Sun off.

## Resources

| Resource | Group | Rate |
| --- | --- | --- |
| Vladislav Losev | Testing | 12 |
| Konstantin Smolyakov | Manager | 12 |
| Natalia Shumilova | Designer | 10 |
| Zakhar Makarevich | Developer | 10 |
| Vladislav Zhukovsky | Developer | 10 |

## Schedule

| ID | WBS | Task | Duration | Start | Finish | Predecessors | Total slack | Free slack | Constraint | Resources | Work | Cost | Work Item ID | State | Work Item Priority | Work Item Type | Links & Attachments | Rev |
| --- | --- | --- | --- | --- | --- | --- | --- | --- | --- | --- | --- | --- | --- | --- | --- | --- | --- | --- |
| 1 | 1 | **Бизнес-анализ** | 2.67d | 2014-10-13 08:00 | 2014-10-13 17:00 |  | 0.64d | 0d |  | Vladislav Losev | 8h | 96 | 35 | ܁: | ܁T | ܁J | Yes |  |
| 2 | 1.1 | **Консультации по вопросам предметной области** | 2.67d | 2014-10-13 08:00 | 2014-10-13 17:00 |  | 0.64d |  |  | Vladislav Losev | 8h | 96 | 36 | ܁: |  | ܁O | Yes | 10 |
| 3 | 1.1.1 | Какие данные хранит банк о карточках? | 4h | 2014-10-13 13:00 | 2014-10-13 17:00 |  | 0d | 0.64d |  | Vladislav Losev | 4h | 48 | 142 | ܁: | ܁T | ܁G | Yes |  |
| 4 | 1.1.2 | Какие идентификаторы используются для счетов, открытых в банке? | 4h | 2014-10-13 08:00 | 2014-10-13 12:00 |  | 0d | 1.97d |  | Vladislav Losev | 4h | 48 | 155 | ܁: | ܁T | ܁G | Yes |  |
| 5 | 2 | **Административная часть** | 19d | 2014-10-14 08:00 | 2014-10-23 09:00 | 1 | 0.64d |  |  | Konstantin Smolyakov | 77.5h | 862 | 40 | ܁: | ܁T | ܁J | Yes |  |
| 6 | 2.1 | **Администратор может просмотреть аудит-лог** | 19d | 2014-10-14 08:00 | 2014-10-23 09:00 |  | 0.64d |  |  | Konstantin Smolyakov | 60.5h | 679 | 53 | ܁: |  | ܁O | Yes | 13 |
| 7 | 2.1.1 | Реализация Audit Trail на SQL Server (migration) | 4h | 2014-10-14 09:00 | 2014-10-14 14:00 | 9 | 0d |  |  | Konstantin Smolyakov | 4h | 48 | 103 | ܁: | ܁U | ܁M | Yes | 19 |
| 8 | 2.1.2 | Написать Publish-Subscribe механизм для сервисов | 8h | 2014-10-16 11:35 | 2014-10-17 16:35 | 17 | 0d |  |  | Zakhar Makarevich | 8h | 80 | 130 | ܁: | ܁V | ܁M | Yes | 14 |
| 9 | 2.1.3 | Создать таблицу [App].[Operation] | 1h | 2014-10-14 08:00 | 2014-10-14 09:00 |  | 0d |  |  | Konstantin Smolyakov | 1h | 12 | 132 | ܁: | ܁T | ܁M | Yes | 15 |
| 10 | 2.1.4 | Front-end для страницы просмотра аудит-логов | 8h | 2014-10-21 08:00 | 2014-10-23 09:00 | 16 | 0d | 4.89d |  | Konstantin Smolyakov | 8h | 96 | 133 | ܁< | ܁T | ܁M | Yes |  |
| 11 | 2.1.5 | Создать таблицу [App].[Action] | 1.5h | 2014-10-14 08:00 | 2014-10-14 09:30 |  | 0d | 1.17d |  | Zakhar Makarevich | 1.5h | 15 | 134 | ܁< | ܁T | ܁M | Yes |  |
| 12 | 2.1.6 | Hangfire Background Job для аудита событий | 6h | 2014-10-17 16:35 | 2014-10-20 14:35 | 8 | 0d | 11.36d |  | Konstantin Smolyakov | 6h | 72 | 135 | ܁< | ܁T | ܁M | Yes | 10 |
| 13 | 2.1.7 | Написать классы для описания событий приложения | 6h | 2014-10-17 16:35 | 2014-10-20 14:35 | 8 | 0d | 11.36d | start no earlier than 2014-10-10 08:00 | Vladislav Zhukovsky | 6h | 60 | 137 | ܁< | ܁T | ܁M | Yes | 10 |
| 14 | 2.1.8 | Написать сущности Operation, DatabaseRow, VersionedDatabaseRow | 4h | 2014-10-14 14:00 | 2014-10-15 09:00 | 7, 9, 11 | 0d |  |  | Zakhar Makarevich | 4h | 40 | 138 | ܁< | ܁T | ܁M | Yes | 11 |
| 15 | 2.1.9 | Написать репозиторий для получения событий аудита | 6h | 2014-10-15 09:00 | 2014-10-17 15:05 | 14 | 0d |  |  | Konstantin Smolyakov | 6h | 72 | 148 | ܁< | ܁T | ܁M | Yes |  |
| 16 | 2.1.10 | Написать сервис и контроллер для получения аудит-лога | 4h | 2014-10-20 10:35 | 2014-10-20 15:35 | 15 | 0d | 0.47d |  | Zakhar Makarevich | 4h | 40 | 149 | ܁< | ܁T | ܁M | Yes | 10 |
| 17 | 2.1.11 | Написать механизм запуска фоновых процессов | 6h | 2014-10-14 08:00 | 2014-10-16 11:35 |  | 11.36d | 0d | start no earlier than 2014-10-13 08:00 | Konstantin Smolyakov | 6h | 72 | 156 | ܁< | ܁T | ܁M | Yes |  |
| 18 | 2.1.12 | Hangfire Background Job для диспетчера событий | 2d | 2014-10-16 14:00 | 2014-10-17 11:00 |  | 14.89d |  |  | Konstantin Smolyakov | 6h | 72 | 165 | ܁< | ܁V | ܁M | Yes |  |
| 19 | 2.2 | **Администратор может привязать счет к аккаунту** | 9.17d | 2014-10-14 08:00 | 2014-10-17 11:30 |  | 8.17d | 0d |  | Zakhar Makarevich | 17h | 183 | 59 | ܁: |  | ܁O | Yes | 12 |
| 20 | 2.2.1 | Схема базы данных для карт-счетов | 4h | 2014-10-14 08:00 | 2014-10-14 12:00 |  | 0d |  |  | Vladislav Zhukovsky | 4h | 40 | 131 | ܁: | ܁V | ܁M | Yes |  |
| 21 | 2.2.2 | Front-end для страницы привязки карт-счета к аккаунту | 6h | 2014-10-15 10:30 | 2014-10-17 11:30 | 23 | 0d | 9.72d |  | Konstantin Smolyakov | 6h | 72 | 136 | ܁< | ܁T | ܁M | Yes |  |
| 22 | 2.2.3 | Создать сущности для счетов/карт-счетов | 3h | 2014-10-14 13:00 | 2014-10-14 16:00 | 20 | 0d |  |  | Vladislav Zhukovsky | 3h | 30 | 144 | ܁< | ܁T | ܁M | Yes |  |
| 23 | 2.2.4 | **Создать сервис и контроллер для управления карт счетами** | 1d | 2014-10-14 16:30 | 2014-10-15 10:30 |  | 9.72d | 0d |  | Vladislav Zhukovsky | 3h | 30 | 145 | ܁< | ܁T | ܁M | Yes | 10 |
| 24 | 2.2.4.1 | Реализация метода для получения списка карт с краткой информацией | 2h | 2014-10-14 16:30 | 2014-10-15 09:30 | 27 | 10.06d |  |  | Vladislav Zhukovsky | 2h | 20 | 152 | ܁< | ܁T | ܁M | Yes |  |
| 25 | 2.2.4.2 | Реализация привязки карты к пользователю | 1h | 2014-10-15 09:30 | 2014-10-15 10:30 | 28 | 0d | 9.72d |  | Vladislav Zhukovsky | 1h | 10 | 154 | ܁< | ܁T | ܁M | Yes |  |

| ID | WBS | Task | Duration | Start | Finish | Predecessors | Total slack | Free slack | Resources | Work | Cost | Work Item ID | State | Work Item Priority | Work Item Type | Links & Attachments | Rev |
| --- | --- | --- | --- | --- | --- | --- | --- | --- | --- | --- | --- | --- | --- | --- | --- | --- | --- |
| 26 | 2.2.5 | **Создать интерфейс для сервиса управления карт-счетами** | 0.17d | 2014-10-14 16:00 | 2014-10-14 16:30 | 22 | 8.17d |  | Konstantin Smolyakov | 1h | 11 | 150 | ܁< | ܁T | ܁M | Yes |  |
| 27 | 2.2.5.1 | Интерфейс метода для получения списка карт с кратой информацией | 0.5h | 2014-10-14 16:00 | 2014-10-14 16:30 |  | 0d |  | Konstantin Smolyakov | 0.5h | 6 | 151 | ܁< | ܁T | ܁M | Yes |  |
| 28 | 2.2.5.2 | Интерфейс метода привязки карты к пользователю | 0.5h | 2014-10-14 16:00 | 2014-10-14 16:30 |  | 0d |  | Vladislav Zhukovsky | 0.5h | 5 | 153 | ܁< | ܁T | ܁M | Yes |  |
| 29 | 3 | **Управление карт-счетами** | 14.72d | 2014-10-17 11:30 | 2014-10-24 16:40 | 1 | 0d |  |  | 34.5h | 375 | 96 | ܁< | ܁T | ܁J | Yes |  |
| 30 | 3.1 | **Пользователь может посмотреть список своих карт** | 5.36d | 2014-10-17 11:30 | 2014-10-21 11:35 | 19 | 7.03d | 0d | Vladislav Zhukovsky | 17h | 190 | 56 | ܁: |  | ܁O | Yes | 11 |
| 31 | 3.1.1 | Просмотр списка своих карт | 8h | 2014-10-17 11:30 | 2014-10-20 11:30 |  | 9.72d |  | Vladislav Losev | 8h | 96 | 81 | ܁A | ܁T | ܁P | Yes |  |
| 32 | 3.1.2 | **Front-end для просмотра списка своих карт** | 3d | 2014-10-20 10:35 | 2014-10-21 11:35 | 35 | 7.03d |  |  | 6h | 64 | 139 | ܁< | ܁T | ܁M | Yes |  |
| 33 | 3.1.2.1 | Верстка списка карт | 4h | 2014-10-20 10:35 | 2014-10-20 15:35 |  | 8.69d |  | Natalia Shumilova | 4h | 40 | 161 | ܁: | ܁T | ܁M | Yes |  |
| 34 | 3.1.2.2 | Angular контроллер и маршруты для списка карт | 0.67d | 2014-10-21 09:35 | 2014-10-21 11:35 |  | 7.03d |  | Konstantin Smolyakov | 2h | 24 | 162 | ܁< | ܁T | ܁M | Yes |  |
| 35 | 3.1.3 | Написать миграцию, назначающую счета для тестовых пользователей | 3h | 2014-10-17 16:35 | 2014-10-20 10:35 |  | 8.69d | 0d | Zakhar Makarevich | 3h | 30 | 143 | ܁< | ܁U | ܁M | Yes |  |
| 36 | 3.2 | **Пользователь может блокировать карту** | 1.83d | 2014-10-22 10:35 | 2014-10-23 08:05 | 30 | 5.19d |  | Vladislav Zhukovsky | 7.5h | 79 | 57 | ܁: |  | ܁O | Yes | 11 |
| 37 | 3.2.1 | **Front-end для страницы просмотра информации о карте** | 1.33d | 2014-10-22 13:05 | 2014-10-23 08:05 | 40 | 5.19d |  |  | 6h | 64 | 140 | ܁< | ܁T | ܁M | Yes |  |
| 38 | 3.2.1.1 | Верстка страницы просмотра информации о карте | 4h | 2014-10-22 13:05 | 2014-10-23 08:05 |  | 5.19d |  | Natalia Shumilova | 4h | 40 | 159 | ܁< | ܁T | ܁M | Yes |  |
| 39 | 3.2.1.2 | Angular часть для страницы просмотра информации о карте | 2h | 2014-10-22 13:05 | 2014-10-22 15:05 |  | 5.86d |  | Konstantin Smolyakov | 2h | 24 | 160 | ܁< | ܁T | ܁M | Yes |  |
| 40 | 3.2.2 | Добавить в сервис и контроллер возможность блокировки карты | 1.5h | 2014-10-22 10:35 | 2014-10-22 13:05 |  | 5.19d | 0d | Vladislav Zhukovsky | 1.5h | 15 | 146 | ܁< | ܁T | ܁M | Yes |  |
| 41 | 3.3 | **Пользователь может устанавливать лимиты на карту** | 9.36d | 2014-10-21 11:35 | 2014-10-24 16:40 | 30 | 0d |  | Konstantin Smolyakov | 10h | 106 | 58 | ܁: |  | ܁O | Yes | 12 |
| 42 | 3.3.1 | **Front-end: редактирование лимитов на странице просмотри информации о карте** | 8.69d | 2014-10-21 14:35 | 2014-10-24 16:40 | 45 | 0d |  |  | 8h | 86 | 141 | ܁< | ܁T | ܁M | Yes |  |
| 43 | 3.3.1.1 | Верстка редактора лимитов на карту | 1.67d | 2014-10-21 14:35 | 2014-10-22 10:35 |  | 7.03d |  | Natalia Shumilova | 5h | 50 | 157 | ܁< | ܁T | ܁M | Yes |  |
| 44 | 3.3.1.2 | Angular контроллер и сервис для обновления лимитов | 1d | 2014-10-24 13:40 | 2014-10-24 16:40 |  | 0d |  | Konstantin Smolyakov | 3h | 36 | 158 | ܁< | ܁T | ܁M | Yes |  |
| 45 | 3.3.2 | Добавить в сервис и контроллер возможность изменения лимитов | 2h | 2014-10-21 11:35 | 2014-10-21 14:35 |  | 7.03d | 0d | Vladislav Zhukovsky | 2h | 20 | 147 | ܁< | ܁T | ܁M | Yes |  |
